# FOPLP 面板式封装

Schedule from a web Gantt chart, 2025-10-20 to 2026-10-19.
Every day is a working day

## Schedule

| ID | WBS | Task | Duration | Start | Finish | Predecessors | Complete | Status |
| --- | --- | --- | --- | --- | --- | --- | --- | --- |
| 2 | 1 | Kickoff | 45d | 2025-12-08 | 2026-01-21 |  | 100% | done |
| 3 | 2 | **Process setup** | 177d | 2025-11-22 | 2026-05-17 |  | 25% |  |
| 4 | 2.1 | Wafer process | 1d | 2025-11-22 | 2025-11-22 |  | 100% |  |
| 5 | 2.2 | Design fix | 40d | 2025-12-08 | 2026-01-16 |  | 100% | done |
| 6 | 2.3 | FOPLP sample | 49d | 2026-01-16 | 2026-03-05 |  |  |  |
| 7 | 2.4 | RE | 73d | 2026-03-06 | 2026-05-17 | 6 |  | waiting |
| 8 | 3 | **Pre-qual lot** | 365d | 2025-10-20 | 2026-10-19 |  | 100% |  |
| 9 | 3.1 | RDL WAFER | 217d | 2026-03-17 | 2026-10-19 |  | 100% | done |
| 10 | 3.2 | FOPLP | 22d | 2025-10-20 | 2025-11-10 |  | 100% |  |
| 11 | 3.3 | FT | 14d | 2025-12-17 | 2025-12-30 |  | 100% |  |
| 12 | 3.4 | RE | 30d | 2025-12-17 | 2026-01-15 |  | 100% |  |
| 13 | 4 | **Formal Qual.** | 32d | 2025-10-27 | 2025-11-27 |  |  |  |
| 14 | 4.1 | RDL WAFER | 32d | 2025-10-27 | 2025-11-27 |  |  |  |
| 15 | 4.2 | FOPLP | 5d | 2025-10-27 | 2025-10-31 |  |  |  |
| 16 | 4.3 | FT | 1d | 2025-10-27 | 2025-10-27 |  |  |  |
| 17 | 4.4 | RE | 1d | 2025-10-27 | 2025-10-27 |  |  |  |

Notes:
- 9: FOPLP8X8 方案 (背面漏铜和漏Si) 待台达确认
- 10: 3-FM+2M
